# driveIT ms project

Schedule from MS Project, 2014-04-01 to 2014-06-22, 3 hours a day, costs in kn.

## Calendars

- 24 Hours: Mon-Sun 16:00-19:00.

## Resources

| Resource | Rate |
| --- | --- |
| Marko | 35 |
| Mislav | 35 |
| Andrea | 35 |
| Lovro | 35 |
| Josip | 35 |
| Laptop1 | 0.01 |
| Laptop2 | 0.01 |
| Laptop3 | 0.01 |
| Laptop4 | 0.01 |
| Laptop5 | 0.01 |

## Schedule

| ID | WBS | Task | Type | Duration | Start | Finish | Predecessors | Resources | Work | Cost |
| --- | --- | --- | --- | --- | --- | --- | --- | --- | --- | --- |
| 1 | 1 | **driveIT** |  | 83d | 2014-04-01 16:00 | 2014-06-22 19:00 |  |  | 345.9h | 12,106.85 |
| 2 | 1.1 | **Specificiranje zahtjeva** |  | 12d | 2014-04-01 16:00 | 2014-04-12 19:00 |  |  | 22.5h | 787.56 |
| 3 | 1.1.1 | Dogovaranje funkcionalnosti | manual | 2h | 2014-04-01 16:00 | 2014-04-01 18:00 |  | Andrea; Josip; Lovro; Marko; Mislav; Laptop1; Laptop2 | 10h | 350.02 |
| 4 | 1.1.2 | Specifikacija korisnika | manual | 1h | 2014-04-01 18:00 | 2014-04-01 19:00 | 3 | Andrea; Josip; Lovro; Marko; Mislav; Laptop1; Laptop2 | 5h | 175.02 |
| 5 | 1.1.3 | Razmatranje ograničenja dizajna implementacije | manual | 1.5h | 2014-04-02 16:00 | 2014-04-02 17:30 | 4 | Andrea; Josip; Lovro; Marko; Mislav; Laptop1; Laptop2 | 7.5h | 262.52 |
| 6 | 1.1.4 | Kraj Specificiranja zahtjeva | milestone, manual | 0d | 2014-04-12 16:00 | 2014-04-12 16:00 |  |  |  |  |
| 7 | 1.2 | **Dizajn** |  | 13d | 2014-04-16 16:00 | 2014-04-28 19:00 |  |  | 46.8h | 1,638.06 |
| 8 | 1.2.1 | Izrada ERA modela | manual | 2d | 2014-04-16 16:00 | 2014-04-17 19:00 | 6, 5 | Josip [80%]; Lovro; Andrea [50%]; Laptop1; Laptop2 | 13.8h | 483.02 |
| 9 | 1.2.2 | Izrada Use case | manual | 1d | 2014-04-16 16:00 | 2014-04-16 19:00 | 6 | Marko; Mislav; Laptop1 | 6h | 210.01 |
| 10 | 1.2.3 | Izrada dijagrama slijeda | manual | 2d | 2014-04-19 16:00 | 2014-04-20 19:00 | 9 | Lovro; Josip [50%]; Andrea; Laptop1 | 15h | 525.01 |
| 11 | 1.2.4 | izrada dijagrama aktivnosti | manual | 1d | 2014-04-19 16:00 | 2014-04-19 19:00 |  | Marko; Laptop2 | 3h | 105.01 |
| 12 | 1.2.5 | Izrada dijagrama klasa | manual | 2d | 2014-04-26 16:00 | 2014-04-27 19:00 |  | Josip [50%]; Lovro; Laptop1 | 9h | 315.01 |
| 13 | 1.2.6 | Kraj modeliranja | milestone, manual | 0d | 2014-04-27 16:00 | 2014-04-27 16:00 |  |  |  |  |
| 14 | 1.3 | **Implementacija** |  | 49d | 2014-05-02 16:00 | 2014-06-19 19:00 |  |  | 255.6h | 8,946.16 |
| 15 | 1.3.1 | Izrada DataBaseAdapter-a I MsSQLDatalink-a | manual | 10h | 2014-05-02 16:00 | 2014-05-05 17:00 | 13, 12 | Lovro; Laptop1 | 10h | 350.01 |
| 16 | 1.3.2 | Izrada CRUD kontrola | manual | 12h | 2014-05-07 16:00 | 2014-05-10 19:00 | 15 | Josip; Lovro; Laptop1; Laptop2 | 24h | 840.02 |
| 17 | 1.3.3 | Izada formi I dizajna | manual | 12h | 2014-05-02 16:00 | 2014-05-05 19:00 | 13 | Mislav; Marko | 24h | 840 |
| 18 | 1.3.4 | Izrada kontrolera do kraja | manual | 13h | 2014-05-12 16:00 | 2014-05-16 17:00 | 16 | Josip; Andrea; Laptop3; Laptop4 | 26h | 910.02 |
| 19 | 1.3.5 | Izrada modula za prikaz detalja | manual | 14h | 2014-05-17 16:00 | 2014-05-21 18:00 | 18, 13 | Josip; Mislav; Laptop2; Laptop4 | 28h | 980.02 |
| 20 | 1.3.6 | Izrada modula za prijavu | manual | 18h | 2014-05-22 16:00 | 2014-05-27 19:00 | 19, 18 | Marko; Mislav; Laptop2; Laptop5 | 36h | 1,260.02 |
| 21 | 1.3.7 | Izrada modula za osvježavanje | manual | 9h | 2014-05-27 16:00 | 2014-05-29 19:00 | 15 | Andrea; Lovro; Laptop1; Laptop3 | 18h | 630.02 |
| 22 | 1.3.8 | Izrada sučelja za mehaničara | manual | 7h | 2014-05-29 16:00 | 2014-05-31 17:00 |  | Laptop2; Marko | 7h | 245.01 |
| 23 | 1.3.9 | Izrada modula za pdf dokumente | manual | 13h | 2014-05-30 16:00 | 2014-06-03 17:00 | 19, 21 | Josip; Laptop4 | 13h | 455.01 |
| 24 | 1.3.10 | Izrada Help dokumenta | manual | 3h | 2014-06-03 16:00 | 2014-06-03 19:00 |  | Andrea; Laptop3 | 3h | 105.01 |
| 25 | 1.3.11 | Izrada interaktivnog parkirališta | manual | 18h | 2014-06-10 16:00 | 2014-06-15 19:00 | 23 | Andrea; Lovro [70%]; Marko; Mislav; Laptop1; Laptop2 | 66.6h | 2,331.02 |
| 26 | 1.3.12 | Kraj realizacije | milestone, manual | 0d | 2014-06-19 16:00 | 2014-06-19 16:00 |  |  |  |  |

| ID | WBS | Task | Type | Duration | Start | Finish | Predecessors | Total slack | Free slack | Constraint | Resources | Work | Cost |
| --- | --- | --- | --- | --- | --- | --- | --- | --- | --- | --- | --- | --- | --- |
| 27 | 1.4 | **Testiranje** |  | 4d | 2014-06-19 16:00 | 2014-06-22 19:00 |  |  |  |  |  | 21h | 735.07 |
| 28 | 1.4.1 | Testiranje dijela za prodavače | manual | 1h | 2014-06-20 16:00 | 2014-06-20 17:00 | 26 |  |  |  | Josip; Lovro; Andrea; Laptop1 | 3h | 105.01 |
| 29 | 1.4.2 | Dorada dijela za prodavače |  | 1h | 2014-06-19 16:00 | 2014-06-19 17:00 | 26 | 3.33d | 0d |  | Lovro; Andrea; Laptop2 | 2h | 70.01 |
| 30 | 1.4.3 | Testiranje dijela za mehaničare | manual | 1h | 2014-06-19 17:00 | 2014-06-19 18:00 | 26, 29 |  |  |  | Marko; Lovro; Laptop3; Andrea | 3h | 105.01 |
| 31 | 1.4.4 | Dorada dijela za mehaničare | manual | 1h | 2014-06-19 16:00 | 2014-06-19 17:00 | 26 |  |  |  | Marko; Lovro; Laptop4; Andrea; Josip | 4h | 140.01 |
| 32 | 1.4.5 | Testiranje cijele aplikacije |  | 1h | 2014-06-20 18:00 | 2014-06-20 19:00 | 31 | 0d |  | finish no earlier than 2014-06-20 19:00 | Andrea; Marko; Laptop1; Laptop2; Josip | 3h | 105.02 |
| 33 | 1.4.6 | Izrada korisničke dokumentacije | manual | 6h | 2014-06-21 16:00 | 2014-06-22 19:00 | 32 |  |  |  | Andrea; Laptop3 | 6h | 210.01 |
| 34 | 1.5 | Održavanje | manual | 1d? | 2014-04-01 16:00 | 2014-04-01 19:00 |  |  |  |  |  |  |  |
